# Tech-farming

Schedule from MS Project, 2025-04-03 to 2025-08-04, costs in $, A marks actual dates.

## Calendars

- Estandar: Mon-Fri 08:00-12:00, 13:00-17:00; Sat-Sun off.

## Resources

| Resource | Rate |
| --- | --- |
| No Asignado |  |
| Ignacio | 5800 |
| Matías | 5800 |
| Benjamín | 5800 |
| Raspberry Pi 4 Model B | 59452 |
| Tarjeta MicroSD 16GB | 1792 |
| Fuente de alimentación 5V 3A USB-C | 3782 |
| Carcasa Raspberry Pi 4 Model B | 6720 |
| Sensor DHT22 (Temperatura y Humedad) | 1714 |
| Sensor NPK RS-485 | 24591 |
| Módulo Max-485 | 740 |
| Protoboard mediana | 4207 |
| Cables jumper macho-macho | 1831 |
| Cables jumper macho-hembra | 1578 |
| Cinta termocontraíble | 3827 |
| Sujetadores de cables | 1258 |

## Schedule

| ID | WBS | Task | Duration | Start | Finish | Predecessors | Complete | Baseline start | Baseline finish | Baseline duration | Constraint | Resources | Work | Actual work | Cost | Actual cost |
| --- | --- | --- | --- | --- | --- | --- | --- | --- | --- | --- | --- | --- | --- | --- | --- | --- |
| 1 | 1 | **Sprint 1** | 2d | 2025-04-03 08:00 A | 2025-04-04 17:00 A |  | 100% | 2025-04-03 08:00 | 2025-04-04 17:00 | 2d |  |  | 40h | 40h | 232,000 | 232,000 |
| 2 | 1.1 | **USR-1 – Crear cuentas de usuario** | 1d | 2025-04-03 08:00 A | 2025-04-03 17:00 A |  | 100% | 2025-04-03 08:00 | 2025-04-03 08:00 | 0d |  |  | 28h | 28h | 162,400 | 162,400 |
| 3 | 1.1.1 | Definir modelo de datos Usuario + permisos | 1d | 2025-04-03 08:00 A | 2025-04-03 17:00 A |  | 100% | 2025-04-03 08:00 | 2025-04-03 08:00 | 0d |  | Ignacio | 8h | 8h | 46,400 | 46,400 |
| 4 | 1.1.2 | Implementar endpoint POST /api/usuarios | 1d | 2025-04-03 08:00 A | 2025-04-03 17:00 A | 3 | 100% | 2025-04-03 08:00 | 2025-04-03 08:00 | 0d |  | Matías | 8h | 8h | 46,400 | 46,400 |
| 5 | 1.1.3 | Crear formulario de UI en Angular para alta de usuario | 1d | 2025-04-03 08:00 A | 2025-04-03 17:00 A | 4 | 100% | 2025-04-03 08:00 | 2025-04-03 08:00 | 0d |  | Benjamín | 8h | 8h | 46,400 | 46,400 |
| 6 | 1.1.4 | Pruebas unitarias y de integración para creación | 0.5d | 2025-04-03 08:00 A | 2025-04-03 12:00 A | 5 | 100% | 2025-04-03 08:00 | 2025-04-03 08:00 | 0d |  | Ignacio | 4h | 4h | 23,200 | 23,200 |
| 7 | 1.2 | **USR-3 – Desactivar/reactivar usuarios** | 1d | 2025-04-04 08:00 A | 2025-04-04 17:00 A |  | 100% | 2025-04-04 08:00 | 2025-04-04 17:00 | 1d | start no earlier than 2025-04-04 08:00 |  | 12h | 12h | 69,600 | 69,600 |
| 8 | 1.2.1 | Añadir flag activo en BD y endpoint PATCH /api/usuarios/:id/activar | 0.5d | 2025-04-04 08:00 A | 2025-04-04 12:00 A | 6 | 100% | 2025-04-04 08:00 | 2025-04-04 08:00 | 0d |  | Matías | 4h | 4h | 23,200 | 23,200 |
| 9 | 1.2.2 | Botón de activar/desactivar en interfaz | 0.5d | 2025-04-04 08:00 A | 2025-04-04 12:00 A | 8 | 100% | 2025-04-04 08:00 | 2025-04-04 13:00 | 0d |  | Benjamín | 4h | 4h | 23,200 | 23,200 |
| 10 | 1.2.3 | Tests para cambio de estado de usuario | 0.5d | 2025-04-04 12:00 A | 2025-04-04 17:00 A | 9 | 100% | 2025-04-04 12:00 | 2025-04-04 17:00 | 0d | start no earlier than 2025-04-04 13:00 | Ignacio | 4h | 4h | 23,200 | 23,200 |
| 11 | 2 | **Sprint 2** | 5d | 2025-04-07 09:00 A | 2025-04-14 09:00 A |  | 100% | 2025-04-07 09:00 | 2025-04-14 09:00 | 5d | start no earlier than 2025-04-07 09:00 |  | 72h | 72h | 417,600 | 417,600 |
| 12 | 2.1 | **AUTH-1 – Login con autenticación segura (JWT/TLS)** | 1.5d | 2025-04-07 09:00 A | 2025-04-08 14:00 A |  | 100% | 2025-04-07 09:00 | 2025-04-08 14:00 | 1.5d |  |  | 20h | 20h | 116,000 | 116,000 |
| 13 | 2.1.1 | Configurar librería JWT y TLS en backend | 0.5d | 2025-04-07 09:00 A | 2025-04-07 14:00 A | 10 | 100% | 2025-04-07 09:00 | 2025-04-07 14:00 | 0d | start no earlier than 2025-04-07 09:00 | Matías | 4h | 4h | 23,200 | 23,200 |
| 14 | 2.1.2 | Implementar endpoint POST /api/login | 0.5d | 2025-04-07 14:00 A | 2025-04-08 09:00 A | 13 | 100% | 2025-04-07 14:00 | 2025-04-08 09:00 | 0d | start no earlier than 2025-04-07 14:00 | Matías | 4h | 4h | 23,200 | 23,200 |
| 15 | 2.1.3 | Maquetar formulario de login en Angular | 0.5d | 2025-04-07 09:00 A | 2025-04-07 14:00 A | 14 | 100% | 2025-04-07 09:00 | 2025-04-07 14:00 | 0d |  | Benjamín | 4h | 4h | 23,200 | 23,200 |
| 16 | 2.1.4 | Enlazar UI con endpoint y manejar tokens | 0.5d | 2025-04-07 14:00 A | 2025-04-08 09:00 A | 15 | 100% | 2025-04-07 14:00 | 2025-04-08 09:00 | 0d | start no earlier than 2025-04-07 14:00 | Benjamín | 4h | 4h | 23,200 | 23,200 |
| 17 | 2.1.5 | Pruebas unitarias e integración de login | 0.5d | 2025-04-08 09:00 A | 2025-04-08 14:00 A | 16 | 100% | 2025-04-08 09:00 | 2025-04-08 14:00 | 0d | start no earlier than 2025-04-08 09:00 | Ignacio | 4h | 4h | 23,200 | 23,200 |
| 18 | 2.2 | **SENS-1 – Registrar nuevos sensores** | 3.5d | 2025-04-07 09:00 A | 2025-04-10 14:00 A |  | 100% | 2025-04-07 09:00 | 2025-04-10 14:00 | 3.5d |  |  | 36h | 36h | 208,800 | 208,800 |
| 19 | 2.2.1 | Módulo de comunicación Pi – Desarrollo e integración | 1d | 2025-04-07 09:00 A | 2025-04-08 09:00 A | 17 | 100% | 2025-04-07 09:00 | 2025-04-07 14:00 | 0d |  | Matías; Benjamín | 16h | 16h | 92,800 | 92,800 |
| 20 | 2.2.2 | Definir esquema de datos “Sensor” en BD y migración | 0.5d | 2025-04-08 14:00 A | 2025-04-09 09:00 A | 19 | 100% | 2025-04-08 14:00 | 2025-04-09 09:00 | 0d | start no earlier than 2025-04-08 14:00 | Matías | 4h | 4h | 23,200 | 23,200 |
| 21 | 2.2.3 | Crear endpoint POST /api/sensores | 0.5d | 2025-04-09 09:00 A | 2025-04-09 14:00 A | 20 | 100% | 2025-04-09 09:00 | 2025-04-09 14:00 | 0d | start no earlier than 2025-04-09 09:00 | Matías | 4h | 4h | 23,200 | 23,200 |
| 22 | 2.2.4 | Construir formulario de registro en Angular | 0.5d | 2025-04-09 09:00 A | 2025-04-09 14:00 A | 21 | 100% | 2025-04-09 09:00 | 2025-04-09 14:00 | 0d | start no earlier than 2025-04-09 09:00 | Benjamín | 4h | 4h | 23,200 | 23,200 |
| 23 | 2.2.5 | Validaciones de datos y manejo de errores | 0.5d | 2025-04-09 14:00 A | 2025-04-10 09:00 A | 22 | 100% | 2025-04-09 14:00 | 2025-04-10 09:00 | 0d | start no earlier than 2025-04-09 14:00 | Benjamín | 4h | 4h | 23,200 | 23,200 |
| 24 | 2.2.6 | Tests de creación de sensores | 0.5d | 2025-04-10 09:00 A | 2025-04-10 14:00 A | 23 | 100% | 2025-04-10 09:00 | 2025-04-10 14:00 | 0d | start no earlier than 2025-04-10 09:00 | Ignacio | 4h | 4h | 23,200 | 23,200 |

| ID | WBS | Task | Duration | Start | Finish | Predecessors | Complete | Baseline start | Baseline finish | Baseline duration | Constraint | Resources | Work | Actual work | Cost | Actual cost |
| --- | --- | --- | --- | --- | --- | --- | --- | --- | --- | --- | --- | --- | --- | --- | --- | --- |
| 25 | 2.3 | **SENS-2 – Activar/desactivar sensores** | 1.5d | 2025-04-10 14:00 A | 2025-04-14 09:00 A |  | 100% | 2025-04-10 14:00 | 2025-04-14 09:00 | 1.5d |  |  | 16h | 16h | 92,800 | 92,800 |
| 26 | 2.3.1 | Añadir campo activo en el modelo Sensor y migración | 0.5d | 2025-04-10 14:00 A | 2025-04-11 09:00 A | 24 | 100% | 2025-04-10 14:00 | 2025-04-11 09:00 | 0d | start no earlier than 2025-04-10 14:00 | Matías | 4h | 4h | 23,200 | 23,200 |
| 27 | 2.3.2 | Endpoint PATCH /api/sensores/:id/activar | 0.5d | 2025-04-11 09:00 A | 2025-04-11 14:00 A | 26 | 100% | 2025-04-11 09:00 | 2025-04-11 14:00 | 0d | start no earlier than 2025-04-11 09:00 | Matías | 4h | 4h | 23,200 | 23,200 |
| 28 | 2.3.3 | Botón de activar/desactivar en la UI | 0.5d | 2025-04-11 09:00 A | 2025-04-11 14:00 A | 27 | 100% | 2025-04-11 09:00 | 2025-04-11 14:00 | 0d | start no earlier than 2025-04-11 09:00 | Benjamín | 4h | 4h | 23,200 | 23,200 |
| 29 | 2.3.4 | Pruebas de toggles de estado | 0.5d | 2025-04-11 14:00 A | 2025-04-14 09:00 A | 28 | 100% | 2025-04-11 14:00 | 2025-04-14 09:00 | 0d | start no earlier than 2025-04-11 14:00 | Ignacio | 4h | 4h | 23,200 | 23,200 |
| 30 | 3 | **Sprint 3** | 5d | 2025-04-14 09:00 A | 2025-04-21 09:00 A |  | 100% | 2025-04-14 09:00 | 2025-04-21 09:00 | 5d | start no earlier than 2025-04-14 09:00 |  | 100h | 100h | 580,000 | 580,000 |
| 31 | 3.1 | **USR-2 – Asignar permisos a usuarios existentes** | 1d | 2025-04-14 09:00 A | 2025-04-15 09:00 A |  | 100% | 2025-04-14 09:00 | 2025-04-15 09:00 | 1d |  |  | 24h | 24h | 139,200 | 139,200 |
| 32 | 3.1.1 | Implementar endpoint PATCH /api/usuarios/:id/permisos | 1d | 2025-04-14 09:00 A | 2025-04-15 09:00 A | 29 | 100% | 2025-04-14 09:00 | 2025-04-15 09:00 | 0d | start no earlier than 2025-04-14 09:00 | Matías | 8h | 8h | 46,400 | 46,400 |
| 33 | 3.1.2 | Crear formulario de gestión de permisos en Angular | 0.5d | 2025-04-14 09:00 A | 2025-04-14 14:00 A | 32 | 100% | 2025-04-14 09:00 | 2025-04-14 14:00 | 0d | start no earlier than 2025-04-14 09:00 | Benjamín | 4h | 4h | 23,200 | 23,200 |
| 34 | 3.1.3 | Conectar UI con el endpoint y validar roles | 0.5d | 2025-04-14 14:00 A | 2025-04-15 09:00 A | 33 | 100% | 2025-04-14 14:00 | 2025-04-15 09:00 | 0d | start no earlier than 2025-04-14 14:00 | Benjamín | 4h | 4h | 23,200 | 23,200 |
| 35 | 3.1.4 | Pruebas unitarias/integración de permisos | 1d | 2025-04-14 09:00 A | 2025-04-15 09:00 A | 34 | 100% | 2025-04-14 09:00 | 2025-04-15 09:00 | 0d | start no earlier than 2025-04-14 09:00 | Ignacio | 8h | 8h | 46,400 | 46,400 |
| 36 | 3.2 | **AUTH-2 – Registrar actividad en logs** | 1d | 2025-04-15 09:00 A | 2025-04-16 09:00 A |  | 100% | 2025-04-15 09:00 | 2025-04-16 09:00 | 1d |  |  | 24h | 24h | 139,200 | 139,200 |
| 37 | 3.2.1 | Definir y crear tabla logs en BD | 0.5d | 2025-04-15 09:00 A | 2025-04-15 14:00 A | 35 | 100% | 2025-04-15 09:00 | 2025-04-15 14:00 | 0d | start no earlier than 2025-04-15 09:00 | Matías | 4h | 4h | 23,200 | 23,200 |
| 38 | 3.2.2 | Implementar función de registro de eventos (login/logout, cambios) en Flask | 0.5d | 2025-04-15 14:00 A | 2025-04-16 09:00 A | 37 | 100% | 2025-04-15 14:00 | 2025-04-16 09:00 | 0d | start no earlier than 2025-04-15 14:00 | Matías | 4h | 4h | 23,200 | 23,200 |
| 39 | 3.2.3 | Interceptar llamadas críticas y escribir en logs | 1d | 2025-04-15 09:00 A | 2025-04-16 09:00 A | 38 | 100% | 2025-04-15 09:00 | 2025-04-16 09:00 | 0d | start no earlier than 2025-04-15 09:00 | Ignacio | 8h | 8h | 46,400 | 46,400 |
| 40 | 3.2.4 | Endpoint para consultar logs en UI | 1d | 2025-04-15 09:00 A | 2025-04-16 09:00 A | 39 | 100% | 2025-04-15 09:00 | 2025-04-16 09:00 | 0d | start no earlier than 2025-04-15 09:00 | Benjamín | 8h | 8h | 46,400 | 46,400 |
| 41 | 3.3 | **HIST-1 – Consultar datos históricos** | 2d | 2025-04-16 09:00 A | 2025-04-18 09:00 A |  | 100% | 2025-04-16 09:00 | 2025-04-18 14:00 | 2.5d |  |  | 36h | 36h | 208,800 | 208,800 |
| 42 | 3.3.1 | Diseñar consulta SQL para rangos y filtros de fechas | 1d | 2025-04-16 09:00 A | 2025-04-17 09:00 A | 40 | 100% | 2025-04-16 09:00 | 2025-04-17 09:00 | 0d | start no earlier than 2025-04-16 09:00 | Ignacio | 8h | 8h | 46,400 | 46,400 |
| 43 | 3.3.2 | Crear endpoint GET /api/historicos con parámetros | 1d | 2025-04-16 09:00 A | 2025-04-17 09:00 A | 42 | 100% | 2025-04-16 09:00 | 2025-04-17 09:00 | 0d | start no earlier than 2025-04-16 09:00 | Matías | 8h | 8h | 46,400 | 46,400 |
| 44 | 3.3.3 | Construir componente Angular para mostrar tabla/gráfico | 1.5d | 2025-04-16 09:00 A | 2025-04-17 14:00 A | 43 | 100% | 2025-04-16 09:00 | 2025-04-17 14:00 | 0d | start no earlier than 2025-04-16 09:00 | Benjamín | 12h | 12h | 69,600 | 69,600 |
| 45 | 3.3.4 | Implementar paginación o lazy-loading | 0.5d | 2025-04-17 14:00 A | 2025-04-18 09:00 A | 44 | 100% | 2025-04-17 14:00 | 2025-04-18 14:00 | 0d | start no earlier than 2025-04-17 14:00 | Benjamín | 4h | 4h | 23,200 | 23,200 |
| 46 | 3.3.5 | Pruebas de rendimiento y funcionales | 0.5d | 2025-04-17 09:00 A | 2025-04-17 14:00 A | 45 | 100% | 2025-04-17 09:00 | 2025-04-17 14:00 | 0d | start no earlier than 2025-04-17 09:00 | Ignacio | 4h | 4h | 23,200 | 23,200 |
| 47 | 3.4 | **AUTH-3 – Sesiones persistentes seguras** | 2d | 2025-04-17 09:00 A | 2025-04-21 09:00 A |  | 100% | 2025-04-17 09:00 | 2025-04-21 09:00 | 2d |  |  | 16h | 16h | 92,800 | 92,800 |
| 48 | 3.4.1 | Configurar refresco automático de JWT en backend | 0.5d | 2025-04-17 09:00 A | 2025-04-17 14:00 A | 46 | 100% | 2025-04-17 09:00 | 2025-04-17 14:00 | 0d | start no earlier than 2025-04-17 09:00 | Matías | 4h | 4h | 23,200 | 23,200 |
| 49 | 3.4.2 | Mantener token en almacenamiento seguro del cliente | 0.5d | 2025-04-18 14:00 A | 2025-04-21 09:00 A | 48 | 100% | 2025-04-18 14:00 | 2025-04-21 09:00 | 0d | start no earlier than 2025-04-18 14:00 | Benjamín | 4h | 4h | 23,200 | 23,200 |
| 50 | 3.4.3 | Tests de expiración y renovación de sesión | 1d | 2025-04-18 09:00 A | 2025-04-21 09:00 A | 49 | 100% | 2025-04-18 09:00 | 2025-04-21 09:00 | 0d | start no earlier than 2025-04-18 09:00 | Ignacio | 8h | 8h | 46,400 | 46,400 |

| ID | WBS | Task | Duration | Start | Finish | Predecessors | Complete | Baseline start | Baseline finish | Baseline duration | Constraint | Resources | Work | Actual work | Cost | Actual cost |
| --- | --- | --- | --- | --- | --- | --- | --- | --- | --- | --- | --- | --- | --- | --- | --- | --- |
| 51 | 4 | **Sprint 4** | 5d | 2025-04-21 09:00 A | 2025-04-28 09:00 A |  | 100% | 2025-04-21 09:00 | 2025-04-28 09:00 | 5d | start no earlier than 2025-04-21 09:00 |  | 88h | 88h | 510,400 | 510,400 |
| 52 | 4.1 | **SENS-3 – Asociar sensores a zonas e invernaderos** | 2d | 2025-04-21 09:00 A | 2025-04-23 09:00 A |  | 100% | 2025-04-21 09:00 | 2025-04-23 09:00 | 2d |  |  | 28h | 28h | 162,400 | 162,400 |
| 53 | 4.1.1 | Definir relación Sensor–Zona en la base de datos y crear migración | 0.5d | 2025-04-21 09:00 A | 2025-04-21 14:00 A | 50 | 100% | 2025-04-21 09:00 | 2025-04-21 14:00 | 0d | start no earlier than 2025-04-21 09:00 | Matías | 4h | 4h | 23,200 | 23,200 |
| 54 | 4.1.2 | Implementar endpoint POST /api/zona/{zonaId}/sensor | 1d | 2025-04-21 14:00 A | 2025-04-22 14:00 A | 53 | 100% | 2025-04-21 14:00 | 2025-04-22 14:00 | 0d | start no earlier than 2025-04-21 14:00 | Matías | 8h | 8h | 46,400 | 46,400 |
| 55 | 4.1.3 | Agregar dropdown de zonas en el formulario de sensor en Angular | 1d | 2025-04-21 09:00 A | 2025-04-22 09:00 A | 54 | 100% | 2025-04-21 09:00 | 2025-04-22 09:00 | 0d | start no earlier than 2025-04-21 09:00 | Benjamín | 8h | 8h | 46,400 | 46,400 |
| 56 | 4.1.4 | Validar asociación en el frontend | 0.5d | 2025-04-22 09:00 A | 2025-04-22 14:00 A | 55 | 100% | 2025-04-22 09:00 | 2025-04-22 14:00 | 0d | start no earlier than 2025-04-22 09:00 | Benjamín | 4h | 4h | 23,200 | 23,200 |
| 57 | 4.1.5 | Pruebas unitarias e integración de la asociación | 0.5d | 2025-04-22 14:00 A | 2025-04-23 09:00 A | 56 | 100% | 2025-04-22 14:00 | 2025-04-23 09:00 | 0d | start no earlier than 2025-04-22 14:00 | Ignacio | 4h | 4h | 23,200 | 23,200 |
| 58 | 4.2 | **INVER-1 – Crear zonas dentro de un invernadero** | 1d | 2025-04-23 09:00 A | 2025-04-24 09:00 A |  | 100% | 2025-04-23 09:00 | 2025-04-24 09:00 | 1d |  |  | 24h | 24h | 139,200 | 139,200 |
| 59 | 4.2.1 | Diseñar modelo Zona e Invernadero en la base de datos | 0.5d | 2025-04-23 09:00 A | 2025-04-23 14:00 A | 57 | 100% | 2025-04-23 09:00 | 2025-04-23 14:00 | 0d | start no earlier than 2025-04-23 09:00 | Ignacio | 4h | 4h | 23,200 | 23,200 |
| 60 | 4.2.2 | Endpoint POST /api/invernaderos/{invId}/zonas en Flask | 1d | 2025-04-23 09:00 A | 2025-04-24 09:00 A | 59 | 100% | 2025-04-23 09:00 | 2025-04-24 09:00 | 0d | start no earlier than 2025-04-23 09:00 | Matías | 8h | 8h | 46,400 | 46,400 |
| 61 | 4.2.3 | Formulario de creación de zona en Angular | 1d | 2025-04-23 09:00 A | 2025-04-24 09:00 A | 60 | 100% | 2025-04-23 09:00 | 2025-04-24 09:00 | 0d | start no earlier than 2025-04-23 09:00 | Benjamín | 8h | 8h | 46,400 | 46,400 |
| 62 | 4.2.4 | Pruebas de flujo completo | 0.5d | 2025-04-23 14:00 A | 2025-04-24 09:00 A | 61 | 100% | 2025-04-23 14:00 | 2025-04-24 09:00 | 0d | start no earlier than 2025-04-23 14:00 | Ignacio | 4h | 4h | 23,200 | 23,200 |
| 63 | 4.3 | **INVER-2 – Registrar nuevos invernaderos** | 1d | 2025-04-24 09:00 A | 2025-04-25 09:00 A |  | 100% | 2025-04-24 09:00 | 2025-04-25 09:00 | 1d |  |  | 16h | 16h | 92,800 | 92,800 |
| 64 | 4.3.1 | Endpoint POST /api/invernaderos y esquema de datos | 0.5d | 2025-04-24 09:00 A | 2025-04-24 14:00 A | 62 | 100% | 2025-04-24 09:00 | 2025-04-24 14:00 | 0d | start no earlier than 2025-04-24 09:00 | Matías | 4h | 4h | 23,200 | 23,200 |
| 65 | 4.3.2 | Maquetar formulario de nuevo invernadero en Angular | 0.5d | 2025-04-24 09:00 A | 2025-04-24 14:00 A | 64 | 100% | 2025-04-24 09:00 | 2025-04-24 14:00 | 0d | start no earlier than 2025-04-24 09:00 | Benjamín | 4h | 4h | 23,200 | 23,200 |
| 66 | 4.3.3 | Validaciones y manejo de errores | 0.5d | 2025-04-24 14:00 A | 2025-04-25 09:00 A | 65 | 100% | 2025-04-24 14:00 | 2025-04-25 09:00 | 0d | start no earlier than 2025-04-24 14:00 | Benjamín | 4h | 4h | 23,200 | 23,200 |
| 67 | 4.3.4 | Pruebas unitarias para creación de invernadero | 0.5d | 2025-04-24 14:00 A | 2025-04-25 09:00 A | 66 | 100% | 2025-04-24 14:00 | 2025-04-25 09:00 | 0d | start no earlier than 2025-04-24 14:00 | Ignacio | 4h | 4h | 23,200 | 23,200 |
| 68 | 4.4 | **CONF-1 – Seleccionar canales de notificación** | 1d | 2025-04-25 09:00 A | 2025-04-28 09:00 A |  | 100% | 2025-04-25 09:00 | 2025-04-28 09:00 | 1d |  |  | 20h | 20h | 116,000 | 116,000 |
| 69 | 4.4.1 | Definir esquema de “canales” en la configuración de usuario | 0.5d | 2025-04-25 09:00 A | 2025-04-25 14:00 A | 67 | 100% | 2025-04-25 09:00 | 2025-04-25 14:00 | 0d | start no earlier than 2025-04-25 09:00 | Ignacio | 4h | 4h | 23,200 | 23,200 |
| 70 | 4.4.2 | Endpoint GET/POST /api/settings/notifications/channels | 0.5d | 2025-04-25 09:00 A | 2025-04-25 14:00 A | 69 | 100% | 2025-04-25 09:00 | 2025-04-25 14:00 | 0d | start no earlier than 2025-04-25 09:00 | Matías | 4h | 4h | 23,200 | 23,200 |
| 71 | 4.4.3 | Componente Angular para seleccionar canales | 1d | 2025-04-25 09:00 A | 2025-04-28 09:00 A | 70 | 100% | 2025-04-25 09:00 | 2025-04-28 09:00 | 0d | start no earlier than 2025-04-25 09:00 | Benjamín | 8h | 8h | 46,400 | 46,400 |
| 72 | 4.4.4 | Pruebas de configuración y persistencia | 0.5d | 2025-04-25 14:00 A | 2025-04-28 09:00 A | 71 | 100% | 2025-04-25 14:00 | 2025-04-28 09:00 | 0d | start no earlier than 2025-04-25 14:00 | Ignacio | 4h | 4h | 23,200 | 23,200 |
| 73 | 5 | **Sprint 5** | 5d | 2025-04-28 09:00 A | 2025-05-05 09:00 A |  | 100% | 2025-04-28 09:00 | 2025-05-05 09:00 | 5d | start no earlier than 2025-04-28 09:00 |  | 80h | 80h | 440,800 | 440,800 |
| 74 | 5.1 | **DASH-1 – Ver dashboard en tiempo real** | 2.5d | 2025-04-28 09:00 A | 2025-04-30 14:00 A |  | 100% | 2025-04-28 09:00 | 2025-04-30 14:00 | 2.5d |  |  | 40h | 40h | 232,000 | 232,000 |
| 75 | 5.1.1 | Diseñar esquema de datos para streaming de variables | 0.5d | 2025-04-28 09:00 A | 2025-04-28 14:00 A | 72 | 100% | 2025-04-28 09:00 | 2025-04-28 14:00 | 0d | start no earlier than 2025-04-28 09:00 | Ignacio | 4h | 4h | 23,200 | 23,200 |
| 76 | 5.1.2 | Implementar endpoint WebSocket/Polling en Flask /api/realtime | 1d | 2025-04-28 09:00 A | 2025-04-29 09:00 A | 75 | 100% | 2025-04-28 09:00 | 2025-04-29 09:00 | 0d | start no earlier than 2025-04-28 09:00 | Matías | 8h | 8h | 46,400 | 46,400 |
| 77 | 5.1.3 | Crear servicio Angular para suscribirse a datos en tiempo real | 1d | 2025-04-28 09:00 A | 2025-04-29 09:00 A | 76 | 100% | 2025-04-28 09:00 | 2025-04-29 09:00 | 0d | start no earlier than 2025-04-28 09:00 | Benjamín | 8h | 8h | 46,400 | 46,400 |
| 78 | 5.1.4 | Desarrollar componente de gráficas dinámicas | 1.5d | 2025-04-29 09:00 A | 2025-04-30 14:00 A | 77 | 100% | 2025-04-29 09:00 | 2025-04-30 14:00 | 0d | start no earlier than 2025-04-29 09:00 | Benjamín | 12h | 12h | 69,600 | 69,600 |
| 79 | 5.1.5 | Pruebas de carga y visualización en dashboard | 1d | 2025-04-29 09:00 A | 2025-04-30 09:00 A | 78 | 100% | 2025-04-29 09:00 | 2025-04-30 09:00 | 0d | start no earlier than 2025-04-29 09:00 | Ignacio | 8h | 8h | 46,400 | 46,400 |

| ID | WBS | Task | Duration | Start | Finish | Predecessors | Complete | Baseline start | Baseline finish | Baseline duration | Constraint | Resources | Work | Actual work | Cost | Actual cost |
| --- | --- | --- | --- | --- | --- | --- | --- | --- | --- | --- | --- | --- | --- | --- | --- | --- |
| 80 | 5.2 | **DASH-2 – Indicadores de salud de sensores** | 1d | 2025-04-30 09:00 A | 2025-05-01 09:00 A |  | 100% | 2025-04-30 09:00 | 2025-05-01 09:00 | 1d | start no earlier than 2025-04-30 09:00 |  | 16h | 16h | 69,600 | 69,600 |
| 81 | 5.2.1 | Añadir campo estatus (online/offline) al modelo Sensor | 0.5d | 2025-04-30 09:00 A | 2025-04-30 14:00 A | 79 | 100% | 2025-04-30 09:00 | 2025-04-30 14:00 | 0d | start no earlier than 2025-04-30 09:00 | Matías | 4h | 4h |  |  |
| 82 | 5.2.2 | Endpoint GET /api/sensores/estatus para salud de red | 0.5d | 2025-04-30 14:00 A | 2025-05-01 09:00 A | 81 | 100% | 2025-04-30 14:00 | 2025-05-01 09:00 | 0d | start no earlier than 2025-04-30 14:00 | Matías | 4h | 4h | 23,200 | 23,200 |
| 83 | 5.2.3 | Componente Angular con badges indicadores | 0.5d | 2025-04-30 09:00 A | 2025-04-30 14:00 A | 82 | 100% | 2025-04-30 09:00 | 2025-04-30 14:00 | 0d | start no earlier than 2025-04-30 09:00 | Benjamín | 4h | 4h | 23,200 | 23,200 |
| 84 | 5.2.4 | Tests de cambio de estado y refresco UI | 0.5d | 2025-04-30 14:00 A | 2025-05-01 09:00 A | 83 | 100% | 2025-04-30 14:00 | 2025-05-01 09:00 | 0d | start no earlier than 2025-04-30 14:00 | Ignacio | 4h | 4h | 23,200 | 23,200 |
| 85 | 5.3 | **CONF-2 – Definir frecuencia de notificaciones** | 2d | 2025-05-01 09:00 A | 2025-05-05 09:00 A |  | 100% | 2025-05-01 09:00 | 2025-05-05 09:00 | 2d |  |  | 24h | 24h | 139,200 | 139,200 |
| 86 | 5.3.1 | Extender modelo de usuario con propiedad frecuenciaNotificaciones | 0.5d | 2025-05-01 09:00 A | 2025-05-01 14:00 A | 84 | 100% | 2025-05-01 09:00 | 2025-05-01 14:00 | 0d | start no earlier than 2025-05-01 09:00 | Ignacio | 4h | 4h | 23,200 | 23,200 |
| 87 | 5.3.2 | Endpoint PUT /api/settings/notifications/frequency | 0.5d | 2025-05-01 14:00 A | 2025-05-02 09:00 A | 86 | 100% | 2025-05-01 14:00 | 2025-05-02 09:00 | 0d | start no earlier than 2025-05-01 14:00 | Matías | 4h | 4h | 23,200 | 23,200 |
| 88 | 5.3.3 | Formulario en Angular para seleccionar frecuencia | 1d | 2025-05-01 09:00 A | 2025-05-02 09:00 A | 87 | 100% | 2025-05-01 09:00 | 2025-05-02 09:00 | 0d | start no earlier than 2025-05-01 09:00 | Benjamín | 8h | 8h | 46,400 | 46,400 |
| 89 | 5.3.4 | Pruebas de persistencia y carga de la configuración | 1d | 2025-05-02 09:00 A | 2025-05-05 09:00 A | 88 | 100% | 2025-05-02 09:00 | 2025-05-05 09:00 | 0d | start no earlier than 2025-05-02 09:00 | Ignacio | 8h | 8h | 46,400 | 46,400 |
| 90 | 6 | **Sprint 6** | 5d | 2025-05-05 09:00 A | 2025-05-12 09:00 A |  | 100% | 2025-05-05 09:00 | 2025-05-12 09:00 | 5d | start no earlier than 2025-05-05 09:00 |  | 80h | 80h | 464,000 | 464,000 |
| 91 | 6.1 | **ALR-1 – Configurar umbrales personalizados** | 2d | 2025-05-05 09:00 A | 2025-05-07 09:00 A |  | 100% | 2025-05-05 09:00 | 2025-05-07 09:00 | 2d |  |  | 32h | 32h | 185,600 | 185,600 |
| 92 | 6.1.1 | Definir modelo de datos de umbrales en BD | 0.5d | 2025-05-05 09:00 A | 2025-05-05 14:00 A | 89 | 100% | 2025-05-05 09:00 | 2025-05-05 14:00 | 0d | start no earlier than 2025-05-05 09:00 | Ignacio | 4h | 4h | 23,200 | 23,200 |
| 93 | 6.1.2 | Endpoint CRUD /api/umbrales en Flask | 1d | 2025-05-05 09:00 A | 2025-05-06 09:00 A | 92 | 100% | 2025-05-05 09:00 | 2025-05-06 09:00 | 0d | start no earlier than 2025-05-05 09:00 | Matías | 8h | 8h | 46,400 | 46,400 |
| 94 | 6.1.3 | Formulario Angular para crear/editar umbrales | 1d | 2025-05-05 09:00 A | 2025-05-06 09:00 A | 93 | 100% | 2025-05-05 09:00 | 2025-05-06 09:00 | 0d | start no earlier than 2025-05-05 09:00 | Benjamín | 8h | 8h | 46,400 | 46,400 |
| 95 | 6.1.4 | Validaciones de rango y manejo de errores en UI | 0.5d | 2025-05-06 09:00 A | 2025-05-06 14:00 A | 94 | 100% | 2025-05-06 09:00 | 2025-05-06 14:00 | 0d | start no earlier than 2025-05-06 09:00 | Benjamín | 4h | 4h | 23,200 | 23,200 |
| 96 | 6.1.5 | Tests unitarios e integración para umbrales | 1d | 2025-05-06 09:00 A | 2025-05-07 09:00 A | 95 | 100% | 2025-05-06 09:00 | 2025-05-07 09:00 | 0d | start no earlier than 2025-05-06 09:00 | Ignacio | 8h | 8h | 46,400 | 46,400 |
| 97 | 6.2 | **ALR-2 – Mostrar alertas visuales y notificaciones** | 2d | 2025-05-06 09:00 A | 2025-05-08 09:00 A |  | 100% | 2025-05-06 09:00 | 2025-05-08 09:00 | 2d |  |  | 24h | 24h | 139,200 | 139,200 |
| 98 | 6.2.1 | Evento en backend para disparar notificación al exceder umbral | 0.5d | 2025-05-06 09:00 A | 2025-05-06 14:00 A | 96 | 100% | 2025-05-06 09:00 | 2025-05-06 14:00 | 0d | start no earlier than 2025-05-06 09:00 | Matías | 4h | 4h | 23,200 | 23,200 |
| 99 | 6.2.2 | Servicio Angular para recibir y encolar notificaciones | 0.5d | 2025-05-06 14:00 A | 2025-05-07 09:00 A | 98 | 100% | 2025-05-06 14:00 | 2025-05-07 09:00 | 0d | start no earlier than 2025-05-06 14:00 | Benjamín | 4h | 4h | 23,200 | 23,200 |
| 100 | 6.2.3 | Componente de lista de alertas en dashboard | 1d | 2025-05-07 09:00 A | 2025-05-08 09:00 A | 99 | 100% | 2025-05-07 09:00 | 2025-05-08 09:00 | 0d | start no earlier than 2025-05-07 09:00 | Benjamín | 8h | 8h | 46,400 | 46,400 |
| 101 | 6.2.4 | Pruebas de flujo de alerta end-to-end | 1d | 2025-05-07 09:00 A | 2025-05-08 09:00 A | 100 | 100% | 2025-05-07 09:00 | 2025-05-08 09:00 | 0d | start no earlier than 2025-05-07 09:00 | Ignacio | 8h | 8h | 46,400 | 46,400 |
| 102 | 6.3 | **DASH-3 – Filtrar dashboard por invernadero y zona** | 2d | 2025-05-08 09:00 A | 2025-05-12 09:00 A |  | 100% | 2025-05-08 09:00 | 2025-05-12 09:00 | 2d |  |  | 24h | 24h | 139,200 | 139,200 |
| 103 | 6.3.1 | Añadir parámetros invernaderoId y zonaId a endpoint /api/realtime | 0.5d | 2025-05-08 09:00 A | 2025-05-08 14:00 A | 101 | 100% | 2025-05-08 09:00 | 2025-05-08 14:00 | 0d | start no earlier than 2025-05-08 09:00 | Matías | 4h | 4h | 23,200 | 23,200 |
| 104 | 6.3.2 | Dropdowns de selección en UI y binding a consulta | 1d | 2025-05-08 09:00 A | 2025-05-09 09:00 A | 103 | 100% | 2025-05-08 09:00 | 2025-05-09 09:00 | 0d | start no earlier than 2025-05-08 09:00 | Benjamín | 8h | 8h | 46,400 | 46,400 |
| 105 | 6.3.3 | Ajustar servicio de datos para filtrar el stream | 0.5d | 2025-05-09 09:00 A | 2025-05-09 14:00 A | 104 | 100% | 2025-05-09 09:00 | 2025-05-09 14:00 | 0d | start no earlier than 2025-05-09 09:00 | Benjamín | 4h | 4h | 23,200 | 23,200 |
| 106 | 6.3.4 | Tests de filtrado y actualización dinámica | 1d | 2025-05-09 09:00 A | 2025-05-12 09:00 A | 105 | 100% | 2025-05-09 09:00 | 2025-05-12 09:00 | 0d | start no earlier than 2025-05-09 09:00 | Ignacio | 8h | 8h | 46,400 | 46,400 |

| ID | WBS | Task | Duration | Start | Finish | Predecessors | Complete | Baseline start | Baseline finish | Baseline duration | Constraint | Resources | Work | Actual work | Cost | Actual cost |
| --- | --- | --- | --- | --- | --- | --- | --- | --- | --- | --- | --- | --- | --- | --- | --- | --- |
| 107 | 7 | **Sprint 7** | 5d | 2025-05-12 09:00 A | 2025-05-19 09:00 A |  | 100% | 2025-05-12 09:00 | 2025-05-19 09:00 | 5d | start no earlier than 2025-05-12 09:00 |  | 76h | 76h | 440,800 | 440,800 |
| 108 | 7.1 | **CONF-3 – Personalizar vista inicial al ingresar** | 1.25d | 2025-05-12 09:00 A | 2025-05-13 11:00 A |  | 100% | 2025-05-12 09:00 | 2025-05-13 11:00 | 1.25d |  |  | 16h | 16h | 92,800 | 92,800 |
| 109 | 7.1.1 | Extender tabla usuarios con campo vistaPredeterminada | 0.25d | 2025-05-12 09:00 A | 2025-05-12 11:00 A | 106 | 100% | 2025-05-12 09:00 | 2025-05-12 11:00 | 0d | start no earlier than 2025-05-12 09:00 | Ignacio | 2h | 2h | 11,600 | 11,600 |
| 110 | 7.1.2 | Endpoint GET/PUT /api/settings/default-view | 0.5d | 2025-05-12 09:00 A | 2025-05-12 14:00 A | 109 | 100% | 2025-05-12 09:00 | 2025-05-12 14:00 | 0d | start no earlier than 2025-05-12 09:00 | Matías | 4h | 4h | 23,200 | 23,200 |
| 111 | 7.1.3 | Componente Angular para seleccionar “Vista inicial | 1d | 2025-05-12 09:00 A | 2025-05-13 09:00 A | 110 | 100% | 2025-05-12 09:00 | 2025-05-13 09:00 | 0d | start no earlier than 2025-05-12 09:00 | Benjamín | 8h | 8h | 46,400 | 46,400 |
| 112 | 7.1.4 | Pruebas de carga/guardado de la vista predeterminada | 0.25d | 2025-05-13 09:00 A | 2025-05-13 11:00 A | 111 | 100% | 2025-05-13 09:00 | 2025-05-13 11:00 | 0d | start no earlier than 2025-05-13 09:00 | Ignacio | 2h | 2h | 11,600 | 11,600 |
| 113 | 7.2 | **CONF-4 – Suscribirse/desuscribirse de notificaciones** | 1d | 2025-05-13 09:00 A | 2025-05-14 09:00 A |  | 100% | 2025-05-13 09:00 | 2025-05-14 09:00 | 1d |  |  | 16h | 16h | 92,800 | 92,800 |
| 114 | 7.2.1 | Añadir campo suscripcionesNotificaciones en el modelo de usuario | 0.25d | 2025-05-13 11:00 A | 2025-05-13 14:00 A | 112 | 100% | 2025-05-13 11:00 | 2025-05-13 14:00 | 0d | start no earlier than 2025-05-13 11:00 | Ignacio | 2h | 2h | 11,600 | 11,600 |
| 115 | 7.2.2 | Endpoint CRUD /api/settings/notifications/subscriptions | 0.5d | 2025-05-13 09:00 A | 2025-05-13 14:00 A | 114 | 100% | 2025-05-13 09:00 | 2025-05-13 14:00 | 0d | start no earlier than 2025-05-13 09:00 | Matías | 4h | 4h | 23,200 | 23,200 |
| 116 | 7.2.3 | UI Angular con checkboxes para cada tipo de notificación | 0.75d | 2025-05-13 09:00 A | 2025-05-13 16:00 A | 115 | 100% | 2025-05-13 09:00 | 2025-05-13 16:00 | 0d | start no earlier than 2025-05-13 09:00 | Benjamín | 6h | 6h | 34,800 | 34,800 |
| 117 | 7.2.4 | Pruebas de persistencia y carga de suscripciones | 0.5d | 2025-05-13 14:00 A | 2025-05-14 09:00 A | 116 | 100% | 2025-05-13 14:00 | 2025-05-14 09:00 | 0d | start no earlier than 2025-05-13 14:00 | Ignacio | 4h | 4h | 23,200 | 23,200 |
| 118 | 7.3 | **HIST-2 – Exportar reportes de datos históricos** | 1d | 2025-05-15 09:00 A | 2025-05-16 09:00 A |  | 100% | 2025-05-15 09:00 | 2025-05-16 09:00 | 1d |  |  | 24h | 24h | 139,200 | 139,200 |
| 119 | 7.3.1 | Implementar endpoint GET /api/historicos/export?format=csv/pdf | 1d | 2025-05-15 09:00 A | 2025-05-16 09:00 A | 117 | 100% | 2025-05-15 09:00 | 2025-05-16 09:00 | 0d | start no earlier than 2025-05-15 09:00 | Matías | 8h | 8h | 46,400 | 46,400 |
| 120 | 7.3.2 | Lógica de backend para generar CSV y PDF | 0.5d | 2025-05-15 09:00 A | 2025-05-15 14:00 A | 119 | 100% | 2025-05-15 09:00 | 2025-05-15 14:00 | 0d | start no earlier than 2025-05-15 09:00 | Matías | 4h | 4h | 23,200 | 23,200 |
| 121 | 7.3.3 | Servicio Angular para descargar y manejar archivos | 1d | 2025-05-15 09:00 A | 2025-05-16 09:00 A | 120 | 100% | 2025-05-15 09:00 | 2025-05-16 09:00 | 0d | start no earlier than 2025-05-15 09:00 | Benjamín | 8h | 8h | 46,400 | 46,400 |
| 122 | 7.3.4 | Pruebas unitarias de exportación en ambos formatos | 0.5d | 2025-05-15 09:00 A | 2025-05-15 14:00 A | 121 | 100% | 2025-05-15 09:00 | 2025-05-15 14:00 | 0d | start no earlier than 2025-05-15 09:00 | Ignacio | 4h | 4h | 23,200 | 23,200 |
| 123 | 7.4 | **HIST-3 – Ver tendencias y comparaciones entre períodos** | 1.5d | 2025-05-15 14:00 A | 2025-05-19 09:00 A |  | 100% | 2025-05-15 14:00 | 2025-05-19 09:00 | 1.5d |  |  | 20h | 20h | 116,000 | 116,000 |
| 124 | 7.4.1 | Extender endpoint /api/historicos para devolver datos comparativos | 1d | 2025-05-15 14:00 A | 2025-05-16 14:00 A | 122 | 100% | 2025-05-15 14:00 | 2025-05-16 14:00 | 0d | start no earlier than 2025-05-15 14:00 | Ignacio | 8h | 8h | 46,400 | 46,400 |
| 125 | 7.4.2 | Componente Angular con gráfico de líneas para comparar periodos | 0.5d | 2025-05-16 09:00 A | 2025-05-16 14:00 A | 124 | 100% | 2025-05-16 09:00 | 2025-05-16 14:00 | 0d | start no earlier than 2025-05-16 09:00 | Benjamín | 4h | 4h | 23,200 | 23,200 |
| 126 | 7.4.3 | Selector UI de rangos para comparación | 0.5d | 2025-05-16 14:00 A | 2025-05-19 09:00 A | 125 | 100% | 2025-05-16 14:00 | 2025-05-19 09:00 | 0d | start no earlier than 2025-05-16 14:00 | Benjamín | 4h | 4h | 23,200 | 23,200 |
| 127 | 7.4.4 | Pruebas de integridad de datos en comparación | 0.5d | 2025-05-16 14:00 A | 2025-05-19 09:00 A | 126 | 100% | 2025-05-16 14:00 | 2025-05-19 09:00 | 0d | start no earlier than 2025-05-16 14:00 | Ignacio | 4h | 4h | 23,200 | 23,200 |
| 128 | 8 | **Sprint 8** | 5d | 2025-05-19 09:00 A | 2025-05-26 09:00 A |  | 100% | 2025-05-19 09:00 | 2025-05-26 09:00 | 5d | start no earlier than 2025-05-19 09:00 |  | 80h | 80h | 464,000 | 464,000 |
| 129 | 8.1 | **HIST-3 – Ver tendencias y comparaciones entre períodos** | 2.5d | 2025-05-19 09:00 A | 2025-05-21 14:00 A |  | 100% | 2025-05-19 09:00 | 2025-05-21 14:00 | 2.5d |  |  | 40h | 40h | 232,000 | 232,000 |
| 130 | 8.1.1 | Definir esquema de datos de predicción y crear tabla/migración en BD | 0.5d | 2025-05-19 09:00 A | 2025-05-19 14:00 A | 127 | 100% | 2025-05-19 09:00 | 2025-05-19 14:00 | 0.5d | start no earlier than 2025-05-19 09:00 | Ignacio | 4h | 4h | 23,200 | 23,200 |
| 131 | 8.1.2 | Implementar endpoint GET /api/predicciones/:parametro | 1d | 2025-05-19 09:00 A | 2025-05-20 09:00 A | 130 | 100% | 2025-05-19 09:00 | 2025-05-20 09:00 | 1d | start no earlier than 2025-05-19 09:00 | Matías | 8h | 8h | 46,400 | 46,400 |
| 132 | 8.1.3 | Desarrollar servicio Angular para consultar predicciones | 1d | 2025-05-19 09:00 A | 2025-05-20 09:00 A | 131 | 100% | 2025-05-19 09:00 | 2025-05-20 09:00 | 1d | start no earlier than 2025-05-19 09:00 | Benjamín | 8h | 8h | 46,400 | 46,400 |
| 133 | 8.1.4 | Crear componente gráfico de líneas para mostrar la predicción | 1.5d | 2025-05-20 09:00 A | 2025-05-21 14:00 A | 132 | 100% | 2025-05-20 09:00 | 2025-05-21 14:00 | 1.5d | start no earlier than 2025-05-20 09:00 | Benjamín | 12h | 12h | 69,600 | 69,600 |
| 134 | 8.1.5 | Escribir pruebas unitarias e integración de predicciones | 1d | 2025-05-20 09:00 A | 2025-05-21 09:00 A | 133 | 100% | 2025-05-20 09:00 | 2025-05-21 09:00 | 1d | start no earlier than 2025-05-20 09:00 | Ignacio | 8h | 8h | 46,400 | 46,400 |

| ID | WBS | Task | Duration | Start | Finish | Predecessors | Complete | Baseline start | Baseline finish | Baseline duration | Constraint | Resources | Work | Actual work | Cost | Actual cost |
| --- | --- | --- | --- | --- | --- | --- | --- | --- | --- | --- | --- | --- | --- | --- | --- | --- |
| 135 | 8.2 | **PRED-2 – Mostrar consejos agronómicos junto a las predicciones** | 3d | 2025-05-21 09:00 A | 2025-05-26 09:00 A |  | 100% | 2025-05-21 09:00 | 2025-05-26 09:00 | 3d |  |  | 40h | 40h | 232,000 | 232,000 |
| 136 | 8.2.1 | Modelar entidad “recomendación” y su relación con rangos de valores | 0.5d | 2025-05-21 09:00 A | 2025-05-21 14:00 A | 134 | 100% | 2025-05-21 09:00 | 2025-05-21 14:00 | 0.5d | start no earlier than 2025-05-21 09:00 | Ignacio | 4h | 4h | 23,200 | 23,200 |
| 137 | 8.2.2 | Crear endpoint GET /api/recomendaciones en Flask | 1d | 2025-05-21 14:00 A | 2025-05-22 14:00 A | 136 | 100% | 2025-05-21 14:00 | 2025-05-22 14:00 | 1d | start no earlier than 2025-05-21 14:00 | Matías | 8h | 8h | 46,400 | 46,400 |
| 138 | 8.2.3 | Construir componente Angular para mostrar recomendaciones junto al gráfico | 1.5d | 2025-05-21 14:00 A | 2025-05-23 09:00 A | 137 | 100% | 2025-05-21 14:00 | 2025-05-23 09:00 | 1.5d | start no earlier than 2025-05-21 14:00 | Benjamín | 12h | 12h | 69,600 | 69,600 |
| 139 | 8.2.4 | Maquetar tarjetas de consejo agronómico en dashboard | 1d | 2025-05-23 09:00 A | 2025-05-26 09:00 A | 138 | 100% | 2025-05-23 09:00 | 2025-05-26 09:00 | 1d | start no earlier than 2025-05-23 09:00 | Benjamín | 8h | 8h | 46,400 | 46,400 |
| 140 | 8.2.5 | Pruebas end-to-end de flujo de recomendaciones | 1d | 2025-05-23 09:00 A | 2025-05-26 09:00 A | 139 | 100% | 2025-05-23 09:00 | 2025-05-26 09:00 | 1d | start no earlier than 2025-05-23 09:00 | Ignacio | 8h | 8h | 46,400 | 46,400 |
| 141 | 9 | **Sprint 9** | 5d | 2025-05-26 09:00 A | 2025-06-02 09:00 A |  | 100% | 2025-05-26 09:00 | 2025-06-02 09:00 | 5d | start no earlier than 2025-04-03 08:00 |  | 48h | 48h | 389,892 | 389,892 |
| 142 | 9.1 | **ML-1 – Preparar y limpiar el dataset para entrenamiento** | 1.5d | 2025-05-26 09:00 A | 2025-05-27 14:00 A |  | 100% | 2025-05-26 09:00 | 2025-05-27 14:00 | 1.5d |  |  | 12h | 12h | 69,600 | 69,600 |
| 143 | 9.1.1 | Extraer y agrupar datos de temperatura, humedad, NPK en ventana de entrenamiento | 0.5d | 2025-05-26 09:00 A | 2025-05-26 14:00 A | 140 | 100% | 2025-05-26 09:00 | 2025-05-26 14:00 | 0.5d | start no earlier than 2025-05-26 09:00 | Ignacio | 4h | 4h | 23,200 | 23,200 |
| 144 | 9.1.2 | Tratar valores faltantes y outliers | 0.5d | 2025-05-26 14:00 A | 2025-05-27 09:00 A | 143 | 100% | 2025-05-26 14:00 | 2025-05-27 09:00 | 0.5d | start no earlier than 2025-05-26 14:00 | Ignacio | 4h | 4h | 23,200 | 23,200 |
| 145 | 9.1.3 | Normalizar o escalar series temporales según el parámetro | 0.5d | 2025-05-27 09:00 A | 2025-05-27 14:00 A | 144 | 100% | 2025-05-27 09:00 | 2025-05-27 14:00 | 0.5d | start no earlier than 2025-05-27 09:00 | Ignacio | 4h | 4h | 23,200 | 23,200 |
| 146 | 9.2 | **ML-2 – Entrenar y ajustar el modelo para cada parámetro** | 2.5d | 2025-05-27 14:00 A | 2025-05-30 09:00 A |  | 100% | 2025-05-27 14:00 | 2025-05-30 09:00 | 2.5d |  |  | 20h | 20h | 116,000 | 116,000 |
| 147 | 9.2.1 | Definir rango de hiperparámetros (p,d,q) inicial | 0.5d | 2025-05-27 14:00 A | 2025-05-28 09:00 A | 145 | 100% | 2025-05-27 14:00 | 2025-05-28 09:00 | 0.5d | start no earlier than 2025-05-27 14:00 | Ignacio | 4h | 4h | 23,200 | 23,200 |
| 148 | 9.2.2 | Ejecutar ciclos de entrenamiento para cada parámetro y evaluar AIC/BIC | 1d | 2025-05-28 09:00 A | 2025-05-29 09:00 A | 147 | 100% | 2025-05-28 09:00 | 2025-05-29 09:00 | 1d | start no earlier than 2025-05-28 09:00 | Ignacio | 8h | 8h | 46,400 | 46,400 |
| 149 | 9.2.3 | Seleccionar modelo óptimo y ajustar configuraciones finales | 0.5d | 2025-05-29 09:00 A | 2025-05-29 14:00 A | 148 | 100% | 2025-05-29 09:00 | 2025-05-29 14:00 | 0.5d | start no earlier than 2025-05-29 09:00 | Ignacio | 4h | 4h | 23,200 | 23,200 |
| 150 | 9.2.4 | Implementar script de entrenamiento automatizado | 0.5d | 2025-05-29 14:00 A | 2025-05-30 09:00 A | 149 | 100% | 2025-05-29 14:00 | 2025-05-30 09:00 | 0.5d | start no earlier than 2025-05-29 14:00 | Ignacio | 4h | 4h | 23,200 | 23,200 |
| 151 | 9.3 | **ML-3 – Validar desempeño y exportar el modelo entrenado** | 1d | 2025-05-30 09:00 A | 2025-06-02 09:00 A |  | 100% | 2025-05-30 09:00 | 2025-06-02 09:00 | 1d |  |  | 16h | 16h | 204,292 | 204,292 |
| 152 | 9.3.1 | Generar métricas de desempeño (RMSE, MAPE) y comparar contra umbrales aceptables | 0.5d | 2025-05-30 09:00 A | 2025-05-30 14:00 A | 150 | 100% | 2025-05-30 09:00 | 2025-05-30 14:00 | 0.5d | start no earlier than 2025-05-30 09:00 | Ignacio; Cables jumper macho-hembra; Cables jumper macho-macho; Cinta termocontraíble; Fuente de alimentación 5V 3A USB-C; Sujetadores de cables; Protoboard mediana | 4h | 4h | 39,683 | 39,683 |
| 153 | 9.3.2 | Serializar el modelo (pickle o similar) y almacenar en ruta de producción | 0.5d | 2025-05-30 09:00 A | 2025-05-30 14:00 A | 152 | 100% | 2025-05-30 09:00 | 2025-05-30 14:00 | 0.5d | start no earlier than 2025-05-30 09:00 | Matías; Carcasa Raspberry Pi 4 Model B; Raspberry Pi 4 Model B; Módulo Max-485; Sensor NPK RS-485; Sensor DHT22 (Temperatura y Humedad); Tarjeta MicroSD 16GB | 4h | 4h | 118,209 | 118,209 |
| 154 | 9.3.3 | Crear endpoint interno /api/modelos/train-status para comprobar versión y fecha de entrenamiento | 0.5d | 2025-05-30 14:00 A | 2025-06-02 09:00 A | 153 | 100% | 2025-05-30 14:00 | 2025-06-02 09:00 | 0.5d | start no earlier than 2025-05-30 14:00 | Matías | 4h | 4h | 23,200 | 23,200 |
| 155 | 9.3.4 | Pruebas unitarias de carga y predicción básica del modelo | 0.5d | 2025-05-30 14:00 A | 2025-06-02 09:00 A | 154 | 100% | 2025-05-30 14:00 | 2025-06-02 09:00 | 0.5d | start no earlier than 2025-05-30 14:00 | Ignacio | 4h | 4h | 23,200 | 23,200 |
| 156 | 10 | **Sprint 10** | 45.12d | 2025-06-02 09:00 A | 2025-08-04 10:00 A |  | 100% | 2025-06-02 09:00 | 2025-06-06 09:00 | 4d | start no earlier than 2025-04-03 08:00 |  | 36h | 36h | 208,800 | 208,800 |
| 157 | 10.1 | **PRED-3 – Alertas de drift cuando el error de predicción supere un umbral** | 45.12d | 2025-06-02 09:00 A | 2025-08-04 10:00 A |  | 100% | 2025-06-02 09:00 | 2025-06-06 09:00 | 4d |  |  | 36h | 36h | 208,800 | 208,800 |
| 158 | 10.1.1 | Definir lógica de detección de drift y umbrales de error | 0.5d | 2025-06-02 09:00 A | 2025-06-02 14:00 A | 155 | 100% | 2025-06-02 09:00 | 2025-06-02 14:00 | 0.5d | start no earlier than 2025-06-02 09:00 | Ignacio | 4h | 4h | 23,200 | 23,200 |
| 159 | 10.1.2 | Implementar cálculo de error y endpoint GET /api/alertas/drift | 1d | 2025-06-02 09:00 A | 2025-06-03 09:00 A | 158 | 100% | 2025-06-02 09:00 | 2025-06-03 09:00 | 1d | start no earlier than 2025-06-02 09:00 | Matías | 8h | 8h | 46,400 | 46,400 |
| 160 | 10.1.3 | Desarrollar servicio Angular para suscribirse a alertas de drift | 1d | 2025-06-03 09:00 A | 2025-06-04 09:00 A | 159 | 100% | 2025-06-03 09:00 | 2025-06-04 09:00 | 1d | start no earlier than 2025-06-03 09:00 | Benjamín | 8h | 8h | 46,400 | 46,400 |
| 161 | 10.1.4 | Crear componente UI que liste y notifique las alertas de drift | 0.5d | 2025-06-04 09:00 A | 2025-06-04 14:00 A | 160 | 100% | 2025-06-04 09:00 | 2025-06-04 14:00 | 0.5d | start no earlier than 2025-06-04 09:00 | Benjamín | 4h | 4h | 23,200 | 23,200 |
| 162 | 10.1.5 | Realizar pruebas end-to-end de drift alerts y documentar configuración | 1.5d | 2025-06-05 09:00 A | 2025-08-04 10:00 A | 161 | 100% | 2025-06-05 09:00 | 2025-06-06 09:00 | 1d | start no earlier than 2025-06-05 09:00 | Ignacio | 12h | 12h | 69,600 | 69,600 |

| ID | WBS | Task | Duration | Start | Finish | Predecessors | Complete | Baseline start | Baseline finish | Baseline duration | Constraint | Resources | Work | Actual work | Cost | Actual cost |
| --- | --- | --- | --- | --- | --- | --- | --- | --- | --- | --- | --- | --- | --- | --- | --- | --- |
| 163 | 11 | **Sprint 11** | 4d | 2025-06-09 09:00 A | 2025-06-13 09:00 A |  | 100% | 2025-06-09 09:00 | 2025-06-13 09:00 | 4d | start no earlier than 2025-04-03 08:00 |  | 64h | 64h | 371,200 | 371,200 |
| 164 | 11.1 | **INVER-3 – Visualizar lista de invernaderos con filtros por ubicación** | 1.5d | 2025-06-09 09:00 A | 2025-06-10 14:00 A |  | 100% | 2025-06-09 09:00 | 2025-06-10 14:00 | 1.5d |  |  | 20h | 20h | 116,000 | 116,000 |
| 165 | 11.1.1 | Backend: Añadir parámetros de consulta ubicacion al endpoint GET /api/invernaderos | 1d | 2025-06-09 09:00 A | 2025-06-10 09:00 A | 162 | 100% | 2025-06-09 09:00 | 2025-06-10 09:00 | 1d | start no earlier than 2025-06-09 09:00 | Matías | 8h | 8h | 46,400 | 46,400 |
| 166 | 11.1.2 | Frontend: Crear dropdown/text-input de filtro por ubicación en la vista de listado | 0.5d | 2025-06-09 09:00 A | 2025-06-09 14:00 A | 165 | 100% | 2025-06-09 09:00 | 2025-06-09 14:00 | 0.5d | start no earlier than 2025-06-09 09:00 | Benjamín | 4h | 4h | 23,200 | 23,200 |
| 167 | 11.1.3 | Frontend: Adaptar llamada al servicio para enviar el filtro y refrescar lista | 0.5d | 2025-06-09 14:00 A | 2025-06-10 09:00 A | 166 | 100% | 2025-06-09 14:00 | 2025-06-10 09:00 | 0.5d | start no earlier than 2025-06-09 14:00 | Benjamín | 4h | 4h | 23,200 | 23,200 |
| 168 | 11.1.4 | Pruebas unitarias e integración de filtrado en ambos extremos | 0.5d | 2025-06-10 09:00 A | 2025-06-10 14:00 A | 167 | 100% | 2025-06-10 09:00 | 2025-06-10 14:00 | 0.5d | start no earlier than 2025-06-10 09:00 | Ignacio | 4h | 4h | 23,200 | 23,200 |
| 169 | 11.2 | **INVER-4 – Editar información de un invernadero** | 2d | 2025-06-11 09:00 A | 2025-06-13 09:00 A |  | 100% | 2025-06-11 09:00 | 2025-06-13 09:00 | 2d |  |  | 44h | 44h | 255,200 | 255,200 |
| 170 | 11.2.1 | Backend: Implementar endpoint PATCH /api/invernaderos/:id para actualización | 0.5d | 2025-06-11 09:00 A | 2025-06-11 14:00 A | 168 | 100% | 2025-06-11 09:00 | 2025-06-11 14:00 | 0.5d | start no earlier than 2025-06-11 09:00 | Matías | 4h | 4h | 23,200 | 23,200 |
| 171 | 11.2.2 | Frontend: Maquetar modal o formulario de edición en la tabla de invernaderos | 0.5d | 2025-06-11 09:00 A | 2025-06-11 14:00 A | 170 | 100% | 2025-06-11 09:00 | 2025-06-11 14:00 | 0.5d | start no earlier than 2025-06-11 09:00 | Benjamín | 4h | 4h | 23,200 | 23,200 |
| 172 | 11.2.3 | Frontend: Conectar formulario al endpoint y manejar validaciones | 0.5d | 2025-06-11 14:00 A | 2025-06-12 09:00 A | 171 | 100% | 2025-06-11 14:00 | 2025-06-12 09:00 | 0.5d | start no earlier than 2025-06-11 14:00 | Benjamín | 4h | 4h | 23,200 | 23,200 |
| 173 | 11.2.4 | Pruebas de edición y persistencia de datos | 1d | 2025-06-12 09:00 A | 2025-06-13 09:00 A | 172 | 100% | 2025-06-12 09:00 | 2025-06-13 09:00 | 1d | start no earlier than 2025-06-12 09:00 | Ignacio | 8h | 8h | 46,400 | 46,400 |
| 174 | 11.2.5 | Calibración y configuración de sensor para demo | 1d | 2025-06-12 09:00 A | 2025-06-13 09:00 A | 173 | 100% | 2025-06-12 09:00 | 2025-06-13 09:00 | 1d | start no earlier than 2025-06-12 09:00 | Ignacio; Matías; Benjamín | 24h | 24h | 139,200 | 139,200 |
